# Simple Project Plan

Schedule from MS Project, 2017-04-10 to 2017-10-16, A marks actual dates.

## Calendars

- Standard: Mon-Fri 08:00-12:00, 13:00-17:00; Sat-Sun off.

## Resources

| Resource |
| --- |
| 黄丹武 |
| 丁元明 |
| 郑博 |
| 刘琪 |
| 张学飞 |
| 李高飞 |
| 谈广 |
| 叶凡 |
| ALL |
| 李响 |
| 包丽娇 |
| 徐园 |
| 刘国栋 |
| 徐驰 |
| 杨宇昌 |
| 李琦 |

## Schedule

| ID | WBS | Task | Type | Duration | Start | Finish | Predecessors | Complete | Remaining | Actual start | Total slack | Constraint | Resources | Work | Actual work |
| --- | --- | --- | --- | --- | --- | --- | --- | --- | --- | --- | --- | --- | --- | --- | --- |
| 1 | 1 | **用户需求调研** |  | 18d | 2017-04-10 A | 2017-05-03 |  | 99% | 0d |  |  |  |  | 1624h | 1247.75h |
| 2 | 1.1 | **项目施工图最终确认** |  | 7d | 2017-04-17 A | 2017-04-25 |  | 99% | 0d |  | 0d |  | 丁元明; 黄丹武; 刘琪; 郑博 | 368h | 336h |
| 3 | 1 | 最终施工图分析 |  | 6d | 2017-04-17 A | 2017-04-24 A |  | 100% |  |  |  | finish no earlier than 2017-04-21 | 黄丹武; 郑博 | 96h | 96h |
| 4 | 1.1.2 | 业流功能流程确认 |  | 3d | 2017-04-18 A | 2017-04-25 A | 3 | 100% |  |  |  | finish no earlier than 2017-04-25 | 丁元明; 黄丹武 | 48h | 48h |
| 5 | 1.2 | **项目框架搭建** |  | 18d | 2017-04-10 A | 2017-05-03 |  | 99% | 0d |  |  |  | 丁元明; 李高飞; 刘琪; 张学飞 | 1256h | 911.75h |
| 6 | 1.2.1 | **webservice框架集成** |  | 18d | 2017-04-10 A | 2017-05-03 |  | 99% | 0d |  |  |  | 丁元明; 李高飞; 刘琪; 张学飞 | 568h | 248h |
| 7 | 1.2.1.1 | cxf webservice(soap接口) | manual | 5d | 2017-04-10 A | 2017-04-14 A |  | 100% |  |  |  |  | 丁元明; 李高飞 | 80h | 80h |
| 8 | 1.2.1.2 | restful 接口 | manual | 3d | 2017-04-17 A | 2017-04-19 A |  | 100% |  |  |  |  | 丁元明; 刘琪 | 24h | 24h |
| 9 | 1.2.1.3 | mina框架集成 | manual | 2d | 2017-05-02 A | 2017-05-03 A |  | 100% |  |  |  |  | 刘琪 | 16h | 16h |
| 10 | 1.2.2 | 客户端调用接口集成 | manual | 5d | 2017-04-17 A | 2017-04-21 A |  | 100% |  |  |  |  | 丁元明; 张学飞 | 80h | 80h |
| 11 | 1.2.3 | 服务调度集成 | manual | 4d | 2017-04-24 A | 2017-04-27 A |  | 100% |  |  |  |  | 张学飞 | 32h | 32h |
| 12 | 2 | **需求分析和设计** |  | 25d | 2017-04-17 A | 2017-05-19 |  | 97% | 0.78d |  |  |  |  | 1316h | 1046.86h |
| 13 | 2.1 | **需求文档编写** |  | 20d | 2017-04-10 | 2017-05-05 |  | 99% | 0d | 2017-04-21 |  |  | ALL | 804h | 710.86h |
| 14 | 2.1.1 | **业务流程图** |  | 2d | 2017-05-02 A | 2017-05-03 |  | 99% | 0d |  |  |  | 丁元明; 叶凡; 包丽娇 | 168h | 144h |
| 15 | 2.1.1.1 | 整托入库流程 | manual | 2d | 2017-05-02 A | 2017-05-03 A |  | 100% |  |  |  |  | 叶凡 | 16h | 16h |
| 16 | 2.1.1.2 | 整托出库流程 | manual | 2d | 2017-05-02 A | 2017-05-03 A |  | 100% |  |  |  |  | 叶凡 | 16h | 16h |
| 17 | 2.1.1.3 | 散货入库流程 | manual | 2d | 2017-05-02 A | 2017-05-03 A |  | 100% |  |  |  |  | 叶凡 | 16h | 16h |
| 18 | 2.1.1.4 | 散货出库流程 | manual | 2d | 2017-05-02 A | 2017-05-03 A |  | 100% |  |  |  |  | 叶凡 | 16h | 16h |
| 19 | 2.1.1.5 | 散件库补料流程 | manual | 2d | 2017-05-02 A | 2017-05-03 A |  | 100% |  |  |  |  | 包丽娇 | 16h | 16h |
| 20 | 2.1.1.6 | 最小包装再贴标 | manual | 2d | 2017-05-02 A | 2017-05-03 A |  | 100% |  |  |  |  | 包丽娇 | 16h | 16h |
| 21 | 2.1.1.7 | 整托重工 | manual | 2d | 2017-05-02 A | 2017-05-03 A |  | 100% |  |  |  |  | 包丽娇 | 16h | 16h |
| 22 | 2.1.1.8 | 散件重工 | manual | 2d | 2017-05-02 A | 2017-05-03 A |  | 100% |  |  |  |  | 包丽娇 | 16h | 16h |
| 23 | 2.1.2 | **系统功能** |  | 3d | 2017-04-21 A | 2017-04-25 A |  | 100% |  |  |  |  | 丁元明; 张学飞 | 156h | 156h |
| 24 | 2.1.2.1 | 对接系统参数管理 | manual | 0.5d | 2017-04-21 A | 2017-04-21 A |  | 100% |  |  |  |  | 丁元明 | 4h | 4h |

Notes:
- 2: 这是摘要任务。使用摘要任务以帮助您在节中组织项目。

| ID | WBS | Task | Type | Duration | Start | Finish | Complete | Resources | Work | Actual work |
| --- | --- | --- | --- | --- | --- | --- | --- | --- | --- | --- |
| 25 | 2.1.2.2 | **仓位管理** |  | 1d | 2017-04-21 A | 2017-04-21 A | 100% | 丁元明 | 24h | 24h |
| 26 | 2.1.2.2.1 | 整托仓管理 | manual | 1d | 2017-04-21 A | 2017-04-21 A | 100% | 丁元明 | 8h | 8h |
| 27 | 2.1.2.2.2 | 散件仓管理 | manual | 1d | 2017-04-21 A | 2017-04-21 A | 100% | 丁元明 | 8h | 8h |
| 28 | 2.1.2.3 | 业务流水管理 | manual | 1d | 2017-04-24 A | 2017-04-24 A | 100% | 张学飞 | 8h | 8h |
| 29 | 2.1.2.4 | 异常任务管理 | manual | 1d | 2017-04-24 A | 2017-04-24 A | 100% | 张学飞 | 8h | 8h |
| 30 | 2.1.2.5 | 看板管理 | manual | 1d | 2017-04-24 A | 2017-04-24 A | 100% | 张学飞 | 8h | 8h |
| 31 | 2.1.2.6 | 工作站点管理 | manual | 1d | 2017-04-24 A | 2017-04-24 A | 100% | 张学飞 | 8h | 8h |
| 32 | 2.1.2.7 | **报表** |  | 2d | 2017-04-24 A | 2017-04-25 A | 100% | 丁元明 | 48h | 48h |
| 33 | 2.1.2.7.1 | 工作量统计 | manual | 1d | 2017-04-24 A | 2017-04-24 A | 100% | 丁元明 | 8h | 8h |
| 34 | 2.1.2.7.2 | 业务流水统计 | manual | 1d | 2017-04-24 A | 2017-04-24 A | 100% | 丁元明 | 8h | 8h |
| 35 | 2.1.2.7.3 | 订单平均处理时间统计 | manual | 1d | 2017-04-25 A | 2017-04-25 A | 100% | 丁元明 | 8h | 8h |
| 36 | 2.1.2.7.4 | 任务平均处理时间统计 | manual | 1d | 2017-04-25 A | 2017-04-25 A | 100% | 丁元明 | 8h | 8h |
| 37 | 2.1.3 | 数据交换 | manual | 1d | 2017-04-25 A | 2017-04-25 A | 100% | 丁元明 | 8h | 8h |
| 38 | 2.1.4 | 业务流程管理 | manual | 1d | 2017-04-25 A | 2017-04-25 A | 100% | 张学飞 | 8h | 8h |
| 39 | 2.1.5 | 仓位计算 | manual | 1d | 2017-04-26 A | 2017-04-26 A | 100% | 张学飞 | 8h | 8h |
| 40 | 2.1.6 | 任务分解管理 | manual | 1d | 2017-04-27 A | 2017-04-27 A | 100% | 丁元明 | 8h | 8h |
| 41 | 2.1.7 | 任务调度 | manual | 2d | 2017-05-02 A | 2017-05-03 A | 100% | 丁元明 | 16h | 16h |
| 42 | 2.1.8 | **接口需求** |  | 5d | 2017-04-24 A | 2017-04-28 A | 100% | 张学飞 | 80h | 80h |
| 43 | 2.1.8.1 | WMS系统接口 | manual | 2d | 2017-04-24 A | 2017-04-25 A | 100% | 张学飞 | 16h | 16h |
| 44 | 2.1.8.2 | 堆垛机WCS接口 | manual | 1d | 2017-04-26 A | 2017-04-26 A | 100% | 张学飞 | 8h | 8h |
| 45 | 2.1.8.3 | 木牛流马WCS接口 | manual | 1d | 2017-04-26 A | 2017-04-26 A | 100% | 张学飞 | 8h | 8h |
| 46 | 2.1.8.4 | 输送线WCS接口 | manual | 1d | 2017-04-27 A | 2017-04-27 A | 100% | 张学飞 | 8h | 8h |
| 47 | 2.1.9 | **需求文档评审修改** |  | 11d | 2017-04-21 A | 2017-05-05 A | 100% | ALL | 264h | 264h |
| 48 | 2.1.9.1 | 需求设计文档一轮评审 | manual | 1d | 2017-04-26 A | 2017-04-26 A | 100% | ALL | 8h | 8h |
| 49 | 2.1.9.2 | 需求设计文档修改 | manual | 4d | 2017-04-27 A | 2017-05-02 A | 100% | 包丽娇; 丁元明; 黄丹武; 叶凡; 张学飞 | 160h | 160h |
| 50 | 2.1.9.3 | 需求设计文档二轮评审 | manual | 1d | 2017-05-04 A | 2017-05-04 A | 100% | ALL | 8h | 8h |

| ID | WBS | Task | Type | Duration | Start | Finish | Predecessors | Complete | Remaining | Actual start | Total slack | Resources | Work | Actual work |
| --- | --- | --- | --- | --- | --- | --- | --- | --- | --- | --- | --- | --- | --- | --- |
| 51 | 2.2 | **详细设计文档编写** |  | 10d | 2017-05-08 A | 2017-05-19 |  | 80% | 2d |  | 0d | ALL | 320h | 248h |
| 52 | 2.2.1 | 设计文档编写 | manual | 6d | 2017-05-08 A | 2017-05-15 A |  | 100% |  |  |  | 丁元明; 黄丹武; 张学飞 | 144h | 144h |
| 53 | 2.2.2 | **设计文档评审修改** |  | 4d | 2017-05-16 A | 2017-05-19 |  | 50% | 2d |  |  | ALL | 96h | 40h |
| 54 | 2.2.2.1 | 设计文档一轮评审 | manual | 1d | 2017-05-16 A | 2017-05-16 A |  | 100% |  |  |  | 包丽娇; 丁元明; 张学飞 | 24h | 24h |
| 55 | 2.2.2.2 | 设计文档修改 | manual | 2d | 2017-05-17 A | 2017-05-18 |  | 50% | 1d |  |  | 丁元明; 张学飞 | 32h | 16h |
| 56 | 2.2.2.3 | 设计文档二轮评审 | manual | 1d | 2017-05-19 | 2017-05-19 |  |  |  |  |  | ALL | 8h |  |
| 57 | 2.3 | **数据库设计文档编写** |  | 6d | 2017-04-17 A | 2017-04-24 |  | 99% | 0d |  |  | ALL | 72h | 48h |
| 58 | 2.3.1 | 数据设计 | manual | 3d | 2017-04-17 A | 2017-04-19 A |  | 100% |  |  |  | 黄丹武; 丁元明 | 24h | 24h |
| 59 | 2.3.2 | 数据库设计评审 | manual | 3d | 2017-04-20 A | 2017-04-24 A |  | 100% |  |  |  | ALL | 24h | 24h |
| 60 | 2.4 | **接口文档编写** |  | 5d | 2017-04-20 | 2017-04-26 |  | 99% | 0d | 2017-04-21 |  | 李高飞; 张学飞 | 120h | 40h |
| 61 | 2.4.1 | 子WCS接口文档 | manual | 3d | 2017-04-24 A | 2017-04-26 A |  | 100% |  |  |  | 张学飞 | 24h | 24h |
| 62 | 2.4.2 | WMS接口文档 | manual | 2d | 2017-04-21 A | 2017-04-24 A |  | 100% |  |  |  | 李高飞 | 16h | 16h |
| 63 | 3 | **软件开发** |  | 66d | 2017-04-10 A | 2017-07-10 |  | 86% | 9.12d |  |  | ALL | 16333.8h | 9762.46h |
| 64 | 3.1 | 开发手册编写 | manual | 3d | 2017-04-18 A | 2017-04-24 A |  | 100% |  |  |  | 丁元明; 叶凡; 张学飞; 谈广 | 52.8h | 52.8h |
| 65 | 3.2 | **WCS总控** |  | 66d | 2017-04-10 A | 2017-07-10 |  | 91% | 5.78d |  |  | 丁元明 | 3464.96h | 1861.77h |
| 66 | 3.2.1 | **WMS接口开发** |  | 22d | 2017-04-10 | 2017-05-09 |  | 99% | 0d | 2017-04-20 |  | 谈广 | 192h | 162.13h |
| 67 | 3.2.1.1 | 上架任务接收接口 | manual | 3d | 2017-04-20 A | 2017-04-24 A |  | 100% |  |  |  | 谈广 | 24h | 24h |
| 68 | 3.2.1.2 | 下架任务接收接口 | manual | 2d | 2017-04-27 A | 2017-04-28 A |  | 100% |  |  |  | 谈广 | 16h | 16h |
| 69 | 3.2.1.3 | 出货暂存区下架任务接收接口 | manual | 2d | 2017-05-03 A | 2017-05-04 A |  | 100% |  |  |  | 谈广 | 16h | 16h |
| 70 | 3.2.1.4 | 标记异常流水号接收接口 | manual | 2d | 2017-05-08 A | 2017-05-09 A | 68 | 100% |  |  |  | 谈广 | 16h | 16h |
| 71 | 3.2.1.5 | 散件上架任务结果 | manual | 1d | 2017-05-09 A | 2017-05-09 A |  | 100% |  |  |  | 谈广 | 8h | 8h |
| 72 | 3.2.2 | **堆垛机WCS接口开发** |  | 49d | 2017-04-25 | 2017-06-30 A |  | 100% |  | 2017-04-21 |  | 丁元明; 李琦; 叶凡 | 1336h | 1336h |
| 73 | 3.2.2.1 | 测试方法调试 | manual | 2d | 2017-04-21 A | 2017-04-24 A |  | 100% |  |  |  | 丁元明; 李琦 | 16h | 16h |
| 74 | 3.2.2.2 | 货物到达 | manual | 2d | 2017-06-17 A | 2017-06-19 A |  | 100% |  |  |  | 叶凡 | 16h | 16h |
| 75 | 3.2.2.3 | 请求上货 | manual | 2d | 2017-06-19 A | 2017-06-20 A |  | 100% |  |  |  | 叶凡 | 16h | 16h |
| 76 | 3.2.2.4 | 上下架任务 | manual | 2d | 2017-06-02 A | 2017-06-04 A |  | 100% |  |  |  | 叶凡 | 16h | 16h |
| 77 | 3.2.2.5 | 任务执行通知 | manual | 3d | 2017-06-05 A | 2017-06-07 A |  | 100% |  |  |  | 叶凡 | 24h | 24h |
| 78 | 3.2.2.6 | 设备状态通知 | manual | 3d | 2017-06-08 A | 2017-06-11 A | 77 | 100% |  |  |  | 叶凡 | 24h | 24h |
| 79 | 3.2.2.7 | 上报库位错误 | manual | 4d | 2017-06-12 A | 2017-06-15 A | 78 | 100% |  |  |  | 叶凡 | 32h | 32h |
| 80 | 3.2.2.8 | 异常上货 | manual | 2d | 2017-06-16 A | 2017-06-19 A |  | 100% |  |  |  | 叶凡 | 16h | 16h |

Notes:
- 72: 在其旁边带有图钉的任务为手动计划任务。当您不想让 Project 移动任务时请使用它们。如果您尚未获得所有信息，您也可以在工期、开始和完成字段输入任意文本或将其保留为空。

| ID | WBS | Task | Type | Duration | Start | Finish | Predecessors | Complete | Remaining | Actual start | Resources | Work | Actual work |
| --- | --- | --- | --- | --- | --- | --- | --- | --- | --- | --- | --- | --- | --- |
| 81 | 3.2.3 | **木牛流马WCS接口开发** |  | 41d | 2017-05-15 | 2017-07-10 |  | 59% | 16.88d | 2017-06-15 | 叶凡; 丁元明 | 792h | 80h |
| 82 | 3.2.3.1 | 【配送】请求配送（调车） | manual | 3d | 2017-06-15 A | 2017-06-17 |  |  | 3d |  | 叶凡 | 24h |  |
| 83 | 3.2.3.2 | 【配送】取货完成 | manual | 2d | 2017-06-18 A | 2017-06-19 A |  | 100% |  |  | 叶凡 | 16h | 16h |
| 84 | 3.2.3.3 | 【配送】请求上货 | manual | 2d | 2017-06-20 A | 2017-06-21 A |  | 100% |  |  | 叶凡 | 16h | 16h |
| 85 | 3.2.3.4 | 【配送】配送完成 | manual | 2d | 2017-06-22 A | 2017-06-23 A |  | 100% |  |  | 叶凡 | 16h | 16h |
| 86 | 3.2.3.5 | 【仓库】请求配送（调车） | manual | 2d | 2017-06-24 A | 2017-06-25 |  |  | 2d |  | 叶凡 | 16h |  |
| 87 | 3.2.3.6 | 【仓库】取/放货完成 | manual | 2d | 2017-06-26 A | 2017-06-27 A |  | 100% |  |  | 叶凡 | 16h | 16h |
| 88 | 3.2.3.7 | 【仓库】配送完成 | manual | 2d | 2017-06-28 A | 2017-06-29 A |  | 100% |  |  | 叶凡 | 16h | 16h |
| 89 | 3.2.3.8 | 【仓库】重捡（转向） | manual | 2d | 2017-06-30 | 2017-07-02 |  |  |  |  | 叶凡 | 16h |  |
| 90 | 3.2.4 | **输送线接口** |  | 15d | 2017-06-12 A | 2017-06-30 |  | 99% | 0d |  | 谈广; 徐驰; 张学飞 | 464h | 168h |
| 91 | 3.2.4.1 | 托盘到达 | manual | 4d | 2017-06-12 A | 2017-06-15 A |  | 100% |  |  | 谈广 | 32h | 32h |
| 92 | 3.2.4.2 | 地址申请指令 | manual | 3d | 2017-06-15 A | 2017-06-19 A |  | 100% |  |  | 谈广 | 24h | 24h |
| 93 | 3.2.4.3 | 中间表1数据跟踪 | manual | 3d | 2017-06-20 A | 2017-06-22 A |  | 100% |  |  | 徐驰 | 24h | 24h |
| 94 | 3.2.4.4 | 中间表2数据跟踪 | manual | 3d | 2017-06-23 A | 2017-06-27 A |  | 100% |  |  | 徐驰 | 24h | 24h |
| 95 | 3.2.4.5 | 跟踪信息表数据跟踪 | manual | 4d | 2017-06-27 A | 2017-06-30 A |  | 100% |  |  | 谈广 | 32h | 32h |
| 96 | 3.2.4.6 | 箱式线地址申请 | manual | 4d | 2017-06-27 A | 2017-06-30 A |  | 100% |  |  | 张学飞 | 32h | 32h |
| 97 | 3.2.5 | **PLC接口** |  | 15d | 2017-06-12 A | 2017-06-30 |  | 99% | 0d |  | 谈广 | 216h | 96h |
| 98 | 3.2.5.1 | 称重测积 | manual | 5d | 2017-06-12 A | 2017-06-16 A |  | 100% |  |  | 谈广 | 40h | 40h |
| 99 | 3.2.5.2 | 货物到达 | manual | 4d | 2017-06-19 A | 2017-06-22 A |  | 100% |  |  | 谈广 | 32h | 32h |
| 100 | 3.2.5.3 | 请求上货 | manual | 3d | 2017-06-23 A | 2017-06-27 A |  | 100% |  |  | 谈广 | 24h | 24h |
| 101 | 3.3 | **数据交换** |  | 11d | 2017-06-19 A | 2017-07-03 |  | 99% | 0d |  | 谈广 | 528h | 440h |
| 102 | 3.3.1 | 材积重量信息 | manual | 11d | 2017-06-19 A | 2017-07-03 A |  | 100% |  |  | 谈广 | 88h | 88h |
| 103 | 3.3.2 | 整板上架任务结果 | manual | 11d | 2017-06-19 A | 2017-07-03 A |  | 100% |  |  | 谈广 | 88h | 88h |
| 104 | 3.3.3 | 下架站点流转信息 | manual | 11d | 2017-06-19 A | 2017-07-03 A |  | 100% |  |  | 谈广 | 88h | 88h |
| 105 | 3.3.4 | 码托信息 | manual | 11d | 2017-06-19 A | 2017-07-03 A | 104 | 100% |  |  | 谈广 | 88h | 88h |
| 106 | 3.3.5 | 出货暂存区下架结果 | manual | 11d | 2017-06-19 A | 2017-07-03 A | 105 | 100% |  |  | 谈广 | 88h | 88h |

| ID | WBS | Task | Type | Duration | Start | Finish | Complete | Remaining | Actual start | Resources | Work | Actual work |
| --- | --- | --- | --- | --- | --- | --- | --- | --- | --- | --- | --- | --- |
| 107 | 3.4 | **业务流程管理** |  | 20d | 2017-05-22 A | 2017-06-16 A | 100% |  |  | 张学飞 | 480h | 480h |
| 108 | 3.4.1 | 流程节点设置 | manual | 20d | 2017-05-22 A | 2017-06-16 A | 100% |  |  | 张学飞 | 160h | 160h |
| 109 | 3.4.2 | 流程节点查询 | manual | 20d | 2017-05-22 A | 2017-06-16 A | 100% |  |  | 张学飞 | 160h | 160h |
| 110 | 3.5 | **仓位计算** |  | 30d | 2017-05-15 | 2017-06-23 | 99% | 0d | 2017-05-12 | 丁元明 | 888h | 648h |
| 111 | 3.5.1 | **整托仓位计算** |  | 12d | 2017-05-15 A | 2017-05-30 A | 100% |  |  | 丁元明 | 288h | 288h |
| 112 | 3.5.1.1 | 推荐巷道计算 | manual | 12d | 2017-05-15 A | 2017-05-30 A | 100% |  |  | 丁元明 | 96h | 96h |
| 113 | 3.5.1.2 | 仓位计算 | manual | 12d | 2017-05-15 A | 2017-05-30 A | 100% |  |  | 丁元明 | 96h | 96h |
| 114 | 3.5.2 | **散件货架计算** |  | 30d | 2017-05-12 A | 2017-06-23 A | 100% |  |  | 丁元明 | 360h | 360h |
| 115 | 3.5.2.1 | 推荐工作台计算 | manual | 9d | 2017-06-05 A | 2017-06-15 A | 100% |  |  | 丁元明 | 72h | 72h |
| 116 | 3.5.2.2 | 货架计算 | manual | 6d | 2017-06-16 A | 2017-06-23 A | 100% |  |  | 丁元明 | 48h | 48h |
| 117 | 3.6 | **任务分解管理** |  | 45d | 2017-05-02 | 2017-07-03 | 90% | 4.5d | 2017-06-05 | 丁元明; 徐驰 | 936h | 216h |
| 118 | 3.6.1 | 整托下架任务拆分 | manual | 5d | 2017-06-05 A | 2017-06-09 A | 100% |  |  | 徐驰 | 40h | 40h |
| 119 | 3.6.2 | 整托上架任务拆分 | manual | 6d | 2017-06-08 A | 2017-06-15 A | 100% |  |  | 丁元明 | 48h | 48h |
| 120 | 3.6.3 | 散件下架任务拆分 | manual | 4d | 2017-06-12 A | 2017-06-15 A | 100% |  |  | 徐驰 | 32h | 32h |
| 121 | 3.6.4 | 重工任务拆分 | manual | 7d | 2017-06-15 A | 2017-06-23 A | 100% |  |  | 徐驰 | 56h | 56h |
| 122 | 3.6.5 | 最小贴标任务拆分 | manual | 5d | 2017-06-23 A | 2017-06-29 A | 100% |  |  | 徐驰 | 40h | 40h |
| 123 | 3.6.6 | 散件库补货任务拆分 | manual | 3d | 2017-06-29 | 2017-07-03 |  |  |  |  |  |  |
| 124 | 3.7 | **任务调度** |  | 20d | 2017-06-02 A | 2017-06-29 A | 100% |  |  | 丁元明; 谈广; 张学飞 | 1040h | 1040h |
| 125 | 3.7.1 | 堆垛机任务调度 | manual | 10d | 2017-06-05 A | 2017-06-16 A | 100% |  |  | 丁元明; 徐驰 | 160h | 160h |
| 126 | 3.7.2 | 木牛配送任务调度 | manual | 11d | 2017-06-15 A | 2017-06-29 A | 100% |  |  | 丁元明; 徐驰 | 176h | 176h |
| 127 | 3.7.3 | 输送线任务调度 | manual | 14d | 2017-06-12 A | 2017-06-29 A | 100% |  |  | 丁元明; 徐驰 | 224h | 224h |
| 128 | 3.8 | **系统功能** |  | 28d | 2017-06-01 | 2017-07-10 | 67% | 9.21d | 2017-05-08 | 丁元明; 刘国栋; 谈广; 叶凡; 张学飞 | 8416h | 5016h |
| 129 | 3.8.1 | 对接系统参数管理 | manual | 25d | 2017-05-08 A | 2017-06-09 A | 100% |  |  | 丁元明; 刘国栋; 谈广; 叶凡; 张学飞 | 1000h | 1000h |
| 130 | 3.8.2 | **仓位管理** |  | 25d | 2017-05-08 A | 2017-06-09 A | 100% |  |  | 丁元明; 刘国栋; 谈广; 叶凡; 张学飞 | 1016h | 1016h |
| 131 | 3.8.2.1 | 整托仓管理 | manual | 1d | 2017-05-08 A | 2017-05-08 A | 100% |  |  | 刘国栋 | 8h | 8h |
| 132 | 3.8.2.2 | 散件仓管理 | manual | 1d | 2017-05-08 A | 2017-05-08 A | 100% |  |  | 刘国栋 | 8h | 8h |
| 133 | 3.8.3 | 业务流水管理 | manual | 25d | 2017-05-08 A | 2017-06-09 A | 100% |  |  | 丁元明; 刘国栋; 谈广; 叶凡; 张学飞 | 1000h | 1000h |
| 134 | 3.8.4 | 异常任务管理 | manual | 25d | 2017-05-08 A | 2017-06-09 A | 100% |  |  | 丁元明; 刘国栋; 谈广; 叶凡; 张学飞 | 1000h | 1000h |
| 135 | 3.8.5 | 工作站点管理 | manual | 25d | 2017-05-08 A | 2017-06-09 A | 100% |  |  | 丁元明; 刘国栋; 谈广; 叶凡; 张学飞 | 1000h | 1000h |
| 136 | 3.8.6 | 看板管理 | manual | 7d | 2017-07-01 | 2017-07-10 |  |  |  | 丁元明; 刘国栋; 谈广; 叶凡; 张学飞 | 280h |  |

| ID | WBS | Task | Type | Duration | Start | Finish | Complete | Remaining | Resources | Work | Actual work |
| --- | --- | --- | --- | --- | --- | --- | --- | --- | --- | --- | --- |
| 137 | 3.8.7 | **报表** |  | 7d | 2017-07-01 | 2017-07-10 |  |  | 丁元明; 刘国栋; 谈广; 叶凡; 张学飞 | 2000h |  |
| 138 | 3.8.7.1 | 工作量统计 | manual | 7d | 2017-07-01 | 2017-07-10 |  |  | 丁元明; 刘国栋; 谈广; 叶凡; 张学飞 | 280h |  |
| 139 | 3.8.7.2 | 业务流水统计 | manual | 7d | 2017-07-01 | 2017-07-10 |  |  | 丁元明; 刘国栋; 谈广; 叶凡; 张学飞 | 280h |  |
| 140 | 3.8.7.3 | 订单平均处理时间统计 | manual | 7d | 2017-07-01 | 2017-07-10 |  |  | 丁元明; 刘国栋; 谈广; 叶凡; 张学飞 | 280h |  |
| 141 | 3.8.7.4 | 任务平均处理时间统计 | manual | 22d | 2017-06-01 | 2017-06-30 |  |  | 丁元明; 刘国栋; 谈广; 叶凡; 张学飞 | 880h |  |
| 142 | 4 | **测试** |  | 118d | 2017-05-03 A | 2017-10-13 | 56% | 52.09d | 包丽娇 | 4752h | 1423.86h |
| 143 | 4.1 | **需求分析** |  | 21d | 2017-05-03 A | 2017-05-31 | 99% | 0d | 包丽娇 | 792h | 614.86h |
| 144 | 4.1.1 | **业务需求** |  | 3d | 2017-05-03 A | 2017-05-05 A | 100% |  | 包丽娇 | 48h | 48h |
| 145 | 4.1.1.1 | 新宁物流业务需求 | manual | 3d | 2017-05-03 A | 2017-05-05 A | 100% |  | 包丽娇 | 24h | 24h |
| 146 | 4.1.2 | **接口需求** |  | 18d | 2017-05-08 A | 2017-05-31 A | 100% |  | 包丽娇 | 288h | 288h |
| 147 | 4.1.2.1 | 新宁WMS接口 | manual | 1d | 2017-05-08 A | 2017-05-08 A | 100% |  | 包丽娇 | 8h | 8h |
| 148 | 4.1.2.2 | 堆垛机接口 | manual | 1d | 2017-05-09 A | 2017-05-09 A | 100% |  | 包丽娇 | 8h | 8h |
| 149 | 4.1.2.3 | 木牛流马接口 | manual | 3d | 2017-05-10 A | 2017-05-12 A | 100% |  | 包丽娇 | 24h | 24h |
| 150 | 4.1.2.4 | 输送线接口 | manual | 5d | 2017-05-15 A | 2017-05-19 A | 100% |  | 包丽娇 | 40h | 40h |
| 151 | 4.1.2.5 | PLC口 | manual | 8d | 2017-05-22 A | 2017-05-31 A | 100% |  | 包丽娇 | 64h | 64h |
| 152 | 4.1.3 | **系统功能需求** |  | 13d | 2017-05-15 A | 2017-05-31 A | 100% |  | 包丽娇 | 224h | 224h |
| 153 | 4.1.3.1 | 对接系统参数管理 | manual | 1d | 2017-05-15 A | 2017-05-15 A | 100% |  | 包丽娇 | 8h | 8h |
| 154 | 4.1.3.2 | 仓位管理模块 | manual | 1d | 2017-05-15 A | 2017-05-15 A | 100% |  | 包丽娇 | 8h | 8h |
| 155 | 4.1.3.3 | 业务流水管理 | manual | 1d | 2017-05-15 A | 2017-05-15 A | 100% |  | 包丽娇 | 8h | 8h |
| 156 | 4.1.3.4 | 异常任务管理 | manual | 1d | 2017-05-15 A | 2017-05-15 A | 100% |  | 包丽娇 | 8h | 8h |
| 157 | 4.1.3.5 | 看板管理 | manual | 1d | 2017-05-16 A | 2017-05-16 A | 100% |  | 包丽娇 | 8h | 8h |
| 158 | 4.1.3.6 | 工作站点管理 | manual | 1d | 2017-05-16 A | 2017-05-16 A | 100% |  | 包丽娇 | 8h | 8h |
| 159 | 4.1.3.7 | 工作量统计 | manual | 1d | 2017-05-16 A | 2017-05-16 A | 100% |  | 包丽娇 | 8h | 8h |
| 160 | 4.1.3.8 | 报表管理 | manual | 8d | 2017-05-22 A | 2017-05-31 A | 100% |  | 包丽娇 | 64h | 64h |

| ID | WBS | Task | Type | Duration | Start | Finish | Complete | Remaining | Actual start | Resources | Work | Actual work |
| --- | --- | --- | --- | --- | --- | --- | --- | --- | --- | --- | --- | --- |
| 161 | 4.1.4 | **系统服务需求** |  | 3d | 2017-05-17 A | 2017-05-19 | 99% | 0d |  | 包丽娇 | 64h | 40h |
| 162 | 4.1.4.1 | 业务流程管理服务 | manual | 1d | 2017-05-17 A | 2017-05-17 A | 100% |  |  | 包丽娇 | 8h | 8h |
| 163 | 4.1.4.2 | 仓位计算服务 | manual | 1d | 2017-05-17 A | 2017-05-17 A | 100% |  |  | 包丽娇 | 8h | 8h |
| 164 | 4.1.4.3 | 任务分解管理服务 | manual | 1d | 2017-05-18 A | 2017-05-18 A | 100% |  |  | 包丽娇 | 8h | 8h |
| 165 | 4.1.4.4 | 数据交换服务 | manual | 1d | 2017-05-19 A | 2017-05-19 A | 100% |  |  | 包丽娇 | 8h | 8h |
| 166 | 4.1.4.5 | 任务调度服务 | manual | 1d | 2017-05-19 A | 2017-05-19 A | 100% |  |  | 包丽娇 | 8h | 8h |
| 167 | 4.2 | **设计测试要点** |  | 18d | 2017-05-08 A | 2017-05-31 A | 100% |  |  | 包丽娇 | 296h | 296h |
| 168 | 4.2.1 | 接口测试要点 | manual | 5d | 2017-05-08 A | 2017-05-12 A | 100% |  |  | 包丽娇 | 40h | 40h |
| 169 | 4.2.2 | 系统服务测试要点 | manual | 7d | 2017-05-15 A | 2017-05-23 A | 100% |  |  | 包丽娇 | 56h | 56h |
| 170 | 4.2.3 | 系统功能测试要点 | manual | 7d | 2017-05-23 A | 2017-05-31 A | 100% |  |  | 包丽娇 | 56h | 56h |
| 171 | 4.3 | 编写测试计划 | manual | 14d | 2017-06-01 A | 2017-06-20 A | 100% |  |  | 包丽娇 | 112h | 112h |
| 172 | 4.4 | 设计测试用例 | manual | 22d | 2017-06-01 A | 2017-06-30 | 60% | 8.8d |  | 包丽娇 | 176h | 105.6h |
| 173 | 4.5 | **测试执行** |  | 113d | 2017-05-10 A | 2017-10-13 | 28% | 80.98d |  | 包丽娇 | 2424h | 272h |
| 174 | 4.5.1 | **系统测试** |  | 70d | 2017-05-10 | 2017-08-15 | 44% | 39.09d | 2017-05-31 | 包丽娇 | 1176h | 272h |
| 175 | 4.5.1.1 | WMS接口测试 | manual | 23d | 2017-05-31 A | 2017-06-30 A | 100% |  |  | 包丽娇 | 184h | 184h |
| 176 | 4.5.1.2 | 一轮功能测试 | manual | 22d | 2017-06-16 A | 2017-07-15 | 50% | 11d |  | 包丽娇 | 176h | 88h |
| 177 | 4.5.1.3 | WCS接口测试 | manual | 15d | 2017-07-03 | 2017-07-21 |  |  |  | 包丽娇 | 120h |  |
| 178 | 4.5.1.4 | 系统测试 | manual | 17d | 2017-07-24 | 2017-08-15 |  |  |  | 包丽娇 | 136h |  |
| 179 | 4.5.2 | 仓库系统集成联调 | manual | 38d | 2017-08-16 | 2017-10-06 |  |  |  | ALL | 304h |  |
| 180 | 4.5.3 | 模拟生产 | manual | 5d | 2017-10-09 | 2017-10-13 |  |  |  | ALL | 40h |  |
| 181 | 4.6 | 提交测试报告 | manual | 1d | 2017-10-13 | 2017-10-13 |  |  |  | 包丽娇 | 8h |  |
| 182 | 5 | **项目验收** |  | 3d | 2017-10-12 | 2017-10-16 |  |  |  | ALL | 120h |  |
| 183 | 5.1 | 项目验收报告 | manual | 3d | 2017-10-12 | 2017-10-16 |  |  |  | ALL | 24h |  |
| 184 | 5.2 | 操作手册 | manual | 3d | 2017-10-12 | 2017-10-16 |  |  |  | 包丽娇; 谈广; 叶凡 | 72h |  |

Notes:
- 173: 基于目前的开发模式，采用敏捷测试的方式进行测试。
